# Software Development Project

Schedule from MS Project, 2002-06-03 to 2003-03-07, 9 hours a day.
Cerebral Works, Inc.

## Calendars

- Standard: Mon-Fri 08:00-12:00, 13:00-17:00; Sat-Sun off.

## Schedule

| ID | WBS | Task | Duration | Start | Finish | Predecessors | Total slack | Free slack |
| --- | --- | --- | --- | --- | --- | --- | --- | --- |
| 1 | 1 | **Software Development Project** | 177d | 2002-06-03 | 2003-03-07 |  | 0d |  |
| 2 | 1.1 | **Project Launch** | 14d | 2002-06-03 | 2002-06-24 |  | 18d |  |
| 3 | 1.1.1 | **Initial Review** | 2d | 2002-06-03 | 2002-06-05 |  | 18d | 0d |
| 4 | 1.1.1.1 | Review Business Case / Statement of Work | 2d | 2002-06-03 | 2002-06-05 |  | 18d |  |
| 5 | 1.1.1.2 | Establish Business Objectives | 2d | 2002-06-03 | 2002-06-05 |  | 18d |  |
| 6 | 1.1.1.3 | Determine Technical Complexity | 2d | 2002-06-03 | 2002-06-05 |  | 18d |  |
| 7 | 1.1.1.4 | Identify Target Audience | 2d | 2002-06-03 | 2002-06-05 |  | 18d |  |
| 8 | 1.1.1.5 | Establish Success Criteria & Measurables | 2d | 2002-06-03 | 2002-06-05 |  | 18d |  |
| 9 | 1.1.2 | **Project Estimation** | 5d | 2002-06-05 | 2002-06-12 | 3 | 18d | 0d |
| 10 | 1.1.2.1 | Identify skill set needed | 5d | 2002-06-05 | 2002-06-12 |  | 18d |  |
| 11 | 1.1.2.2 | Identify (Initial) HW / SW environment | 5d | 2002-06-05 | 2002-06-12 |  | 18d |  |
| 12 | 1.1.2.3 | Develop time & effort estimates | 5d | 2002-06-05 | 2002-06-12 |  | 18d |  |
| 13 | 1.1.2.4 | Develop Man Power Budget | 5d | 2002-06-05 | 2002-06-12 |  | 18d |  |
| 14 | 1.1.2.5 | Develop Hardware and Software Budget | 5d | 2002-06-05 | 2002-06-12 |  | 18d |  |
| 15 | 1.1.2.6 | Develop / Review / Update Initial Budget | 5d | 2002-06-05 | 2002-06-12 |  | 18d |  |
| 16 | 1.1.3 | **Project Planning** | 5d | 2002-06-05 | 2002-06-12 | 3 | 170d |  |
| 17 | 1.1.3.1 | Organization | 5d | 2002-06-05 | 2002-06-12 |  | 170d |  |
| 18 | 1.1.3.2 | Communication Plan | 5d | 2002-06-05 | 2002-06-12 |  | 170d |  |
| 19 | 1.1.3.3 | Project Quality Plan | 5d | 2002-06-05 | 2002-06-12 |  | 170d |  |
| 20 | 1.1.3.4 | Data Migration Plan | 5d | 2002-06-05 | 2002-06-12 |  | 170d |  |
| 21 | 1.1.3.5 | Integration Plan | 5d | 2002-06-05 | 2002-06-12 |  | 170d |  |
| 22 | 1.1.3.6 | Implementation Plan | 5d | 2002-06-05 | 2002-06-12 |  | 170d |  |
| 23 | 1.1.3.7 | Test Plan | 5d | 2002-06-05 | 2002-06-12 |  | 170d |  |
| 24 | 1.1.3.8 | Training Plan | 5d | 2002-06-05 | 2002-06-12 |  | 170d |  |
| 25 | 1.1.3.9 | Support & Maintenance Plan | 5d | 2002-06-05 | 2002-06-12 |  | 170d |  |

| ID | WBS | Task | Duration | Start | Finish | Predecessors | Total slack | Free slack |
| --- | --- | --- | --- | --- | --- | --- | --- | --- |
| 26 | 1.1.4 | **Man-Power Planning** | 5d | 2002-06-05 | 2002-06-12 | 3 | 21d | 0d |
| 27 | 1.1.4.1 | Detail skill-set list | 5d | 2002-06-05 | 2002-06-12 |  | 21d |  |
| 28 | 1.1.4.2 | Identify Client resources | 5d | 2002-06-05 | 2002-06-12 |  | 21d |  |
| 29 | 1.1.4.3 | Man-power count | 5d | 2002-06-05 | 2002-06-12 |  | 21d |  |
| 30 | 1.1.4.4 | Identify Sources/Get Quotes | 5d | 2002-06-05 | 2002-06-12 |  | 21d |  |
| 31 | 1.1.5 | **Initial HW /SW Planning** | 5d | 2002-06-12 | 2002-06-20 | 9 | 18d | 0d |
| 32 | 1.1.5.1 | Development / Testing / Production environment details | 2d | 2002-06-12 | 2002-06-17 |  | 21d |  |
| 33 | 1.1.5.2 | Identify Sources/Get Quotes | 5d | 2002-06-12 | 2002-06-20 |  | 18d |  |
| 34 | 1.1.6 | **Approval & Go Ahead** | 7d | 2002-06-12 | 2002-06-24 |  | 18d | 0d |
| 35 | 1.1.6.1 | Review Project Work Plan | 1d | 2002-06-12 | 2002-06-14 | 26 | 21d | 0d |
| 36 | 1.1.6.2 | Check project plan against client calendar | 1d | 2002-06-14 | 2002-06-17 | 35 | 21d | 3d |
| 37 | 1.1.6.3 | Present revised business case and plan | 1d | 2002-06-20 | 2002-06-21 | 36, 31 | 18d | 0d |
| 38 | 1.1.6.4 | Get Approval for Project | 1d | 2002-06-21 | 2002-06-24 | 37 | 18d |  |
| 39 | 1.2 | **Acquire Resources** | 10d | 2002-06-24 | 2002-07-10 | 34 | 153d |  |
| 40 | 1.2.1 | **Man-Power** | 10d | 2002-06-24 | 2002-07-10 |  | 153d |  |
| 41 | 1.2.1.1 | Send PO/Sign Contract | 5d | 2002-06-24 | 2002-07-02 |  | 153d | 0d |
| 42 | 1.2.1.2 | Get Team On Board | 5d | 2002-07-02 | 2002-07-10 | 41 | 153d |  |
| 43 | 1.2.2 | **Work space & equipment** | 5d | 2002-06-24 | 2002-07-02 | 34 | 158d |  |
| 44 | 1.2.2.1 | Identify need | 1d | 2002-06-24 | 2002-06-25 |  | 162d |  |
| 45 | 1.2.2.2 | Get Work space & equipment for team | 5d | 2002-06-24 | 2002-07-02 |  | 158d |  |
| 46 | 1.3 | **Requirement Definition** | 32d | 2002-06-24 | 2002-08-13 | 34 | 18d | 0d |
| 47 | 1.3.1 | **Current System** | 5d | 2002-06-24 | 2002-07-02 |  | 18d | 0d |
| 48 | 1.3.1.1 | Review / Document business functions | 5d | 2002-06-24 | 2002-07-02 |  | 18d |  |
| 49 | 1.3.1.2 | Review / Document system functions | 5d | 2002-06-24 | 2002-07-02 |  | 18d |  |

| ID | WBS | Task | Duration | Start | Finish | Predecessors | Total slack | Free slack |
| --- | --- | --- | --- | --- | --- | --- | --- | --- |
| 50 | 1.3.2 | **Business Requirements** | 17d | 2002-06-24 | 2002-07-19 |  | 23d | 0d |
| 51 | 1.3.2.1 | Schedule client interviews | 5d | 2002-06-24 | 2002-07-02 |  | 40d |  |
| 52 | 1.3.2.2 | Identify hi-level business functions & requirements | 5d | 2002-07-02 | 2002-07-10 | 47 | 18d | 0d |
| 53 | 1.3.2.3 | **Detailed business requirements** | 10d | 2002-06-24 | 2002-07-10 |  | 28d | 0d |
| 54 | 1.3.2.3.1 | Business rules | 10d | 2002-06-24 | 2002-07-10 |  | 28d |  |
| 55 | 1.3.2.3.2 | Input / Output requirements | 10d | 2002-06-24 | 2002-07-10 |  | 28d |  |
| 56 | 1.3.2.3.3 | Processing / Computing requirements | 10d | 2002-06-24 | 2002-07-10 |  | 28d |  |
| 57 | 1.3.2.3.4 | Storage / Archival | 10d | 2002-06-24 | 2002-07-10 |  | 28d |  |
| 58 | 1.3.2.4 | Document business requirements | 5d | 2002-07-10 | 2002-07-17 | 53 | 28d | 0d |
| 59 | 1.3.2.5 | Review business requirements | 1d | 2002-07-17 | 2002-07-18 | 58 | 28d | 0d |
| 60 | 1.3.2.6 | Business Requirement sign-off | 1d | 2002-07-18 | 2002-07-19 | 59 | 28d |  |
| 61 | 1.3.3 | **Systems Requirements** | 17d | 2002-07-10 | 2002-08-06 | 47, 52 | 18d | 0d |
| 62 | 1.3.3.1 | Identify technical requirements | 10d | 2002-07-10 | 2002-07-25 |  | 18d | 0d |
| 63 | 1.3.3.2 | Identify integration requirements | 10d | 2002-07-10 | 2002-07-25 |  | 18d | 0d |
| 64 | 1.3.3.3 | Identify performance requirements | 10d | 2002-07-10 | 2002-07-25 |  | 18d | 0d |
| 65 | 1.3.3.4 | Develop User Interface requirements | 10d | 2002-07-10 | 2002-07-25 |  | 18d | 0d |
| 66 | 1.3.3.5 | Document system requirements | 5d | 2002-07-25 | 2002-08-01 | 62, 63, 64, 65 | 18d | 0d |
| 67 | 1.3.3.6 | Reveiw system requirements | 1d | 2002-08-01 | 2002-08-05 | 66 | 18d | 0d |
| 68 | 1.3.3.7 | System requirement signoff | 1d | 2002-08-05 | 2002-08-06 | 67 | 18d |  |
| 69 | 1.3.4 | **Testing** | 5d | 2002-07-19 | 2002-07-29 | 50 | 28d |  |
| 70 | 1.3.4.1 | User Acceptance Criteria | 5d | 2002-07-19 | 2002-07-29 |  | 28d |  |
| 71 | 1.3.5 | **Training** | 5d | 2002-08-06 | 2002-08-13 | 61 | 18d |  |
| 72 | 1.3.5.1 | Identify training needs | 5d | 2002-08-06 | 2002-08-13 |  | 18d |  |
| 73 | 1.4 | **Detailed Design** | 17d | 2002-08-13 | 2002-09-09 | 46 | 18d | 0d |
| 74 | 1.4.1 | **Current System** | 5d | 2002-08-13 | 2002-08-21 |  | 18d | 0d |
| 75 | 1.4.1.1 | Reveiw / Document current state design | 5d | 2002-08-13 | 2002-08-21 |  | 18d |  |
| 76 | 1.4.1.2 | Review / Document process model | 5d | 2002-08-13 | 2002-08-21 |  | 18d |  |
| 77 | 1.4.1.3 | Review / Document data architecture | 5d | 2002-08-13 | 2002-08-21 |  | 18d |  |
| 78 | 1.4.1.4 | Review / Document application architecture | 5d | 2002-08-13 | 2002-08-21 |  | 18d |  |
| 79 | 1.4.1.5 | Review / Document technical architecture | 5d | 2002-08-13 | 2002-08-21 |  | 18d |  |

| ID | WBS | Task | Duration | Start | Finish | Predecessors | Total slack | Free slack |
| --- | --- | --- | --- | --- | --- | --- | --- | --- |
| 80 | 1.4.2 | **Proposed System** | 10d | 2002-08-21 | 2002-09-05 | 74 | 18d | 0d |
| 81 | 1.4.2.1 | Process Model | 10d | 2002-08-21 | 2002-09-05 |  | 18d |  |
| 82 | 1.4.2.2 | Entity Relationship | 10d | 2002-08-21 | 2002-09-05 |  | 18d |  |
| 83 | 1.4.2.3 | Data Flow | 10d | 2002-08-21 | 2002-09-05 |  | 18d |  |
| 84 | 1.4.2.4 | Data modeling | 10d | 2002-08-21 | 2002-09-05 |  | 18d |  |
| 85 | 1.4.2.5 | Define data architecture | 10d | 2002-08-21 | 2002-09-05 |  | 18d |  |
| 86 | 1.4.2.6 | Define application architecture | 10d | 2002-08-21 | 2002-09-05 |  | 18d |  |
| 87 | 1.4.2.7 | Define technical architecture | 10d | 2002-08-21 | 2002-09-05 |  | 18d |  |
| 88 | 1.4.3 | **Review Proposed System** | 2d | 2002-09-05 | 2002-09-09 | 80 | 65d |  |
| 89 | 1.4.3.1 | Review system design | 1d | 2002-09-05 | 2002-09-06 |  | 65d | 0d |
| 90 | 1.4.3.2 | Proposed design signoff | 1d | 2002-09-06 | 2002-09-09 | 89 | 65d |  |
| 91 | 1.5 | **System Configuration** | 3d | 2002-09-05 | 2002-09-11 |  | 18d | 0d |
| 92 | 1.5.1 | **Hardware** | 3d | 2002-09-05 | 2002-09-11 | 80 | 18d |  |
| 93 | 1.5.1.1 | Develop hardware configuration | 2d | 2002-09-05 | 2002-09-09 |  | 18d | 0d |
| 94 | 1.5.1.2 | Development / Testing / Production environment details | 2d | 2002-09-05 | 2002-09-09 |  | 18d | 0d |
| 95 | 1.5.1.3 | Review and signoff | 1d | 2002-09-09 | 2002-09-11 | 93, 94 | 18d |  |
| 96 | 1.5.2 | **Software** | 3d | 2002-09-05 | 2002-09-11 | 80 | 18d |  |
| 97 | 1.5.2.1 | Design SW configuration | 2d | 2002-09-05 | 2002-09-09 |  | 18d | 0d |
| 98 | 1.5.2.2 | Development / Testing / Production environment details | 2d | 2002-09-05 | 2002-09-09 |  | 18d | 0d |
| 99 | 1.5.2.3 | Review and signoff | 1d | 2002-09-09 | 2002-09-11 | 97, 98 | 18d |  |
| 100 | 1.6 | **Acquire and Install System** | 83d | 2002-09-11 | 2003-01-20 |  | 18d |  |
| 101 | 1.6.1 | **Hardware** | 83d | 2002-09-11 | 2003-01-20 | 91 | 18d |  |
| 102 | 1.6.1.1 | Identify Sources/Get Quotes | 5d | 2002-09-11 | 2002-09-18 |  | 18d | 0d |
| 103 | 1.6.1.2 | Send PO/Sign Contract | 5d | 2002-09-18 | 2002-09-26 | 102 | 18d | 0d |
| 104 | 1.6.1.3 | Acquire, install & test HW For Development | 5d | 2002-09-26 | 2002-10-03 | 103 | 18d | 0d |
| 105 | 1.6.1.4 | Acquire, install & test HW For Testing | 5d | 2002-09-26 | 2002-10-03 | 103 | 98d |  |
| 106 | 1.6.1.5 | Acquire HW For Production | 5d | 2003-01-10 | 2003-01-20 | 103, 180SS-10d | 0d |  |

| ID | WBS | Task | Duration | Start | Finish | Predecessors | Total slack | Free slack |
| --- | --- | --- | --- | --- | --- | --- | --- | --- |
| 107 | 1.6.2 | **Software** | 83d | 2002-09-11 | 2003-01-20 | 91 | 30d |  |
| 108 | 1.6.2.1 | Identify Sources/Get Quotes | 5d | 2002-09-11 | 2002-09-18 |  | 101d | 0d |
| 109 | 1.6.2.2 | Send PO/Sign Contract | 2d | 2002-09-18 | 2002-09-20 | 108 | 101d | 0d |
| 110 | 1.6.2.3 | Acquire, install & test SW For Development | 5d | 2002-09-20 | 2002-09-30 | 109 | 101d |  |
| 111 | 1.6.2.4 | Acquire, install & test SW For Testing | 5d | 2002-09-20 | 2002-09-30 | 109 | 101d |  |
| 112 | 1.6.2.5 | Acquire SW For Production | 5d | 2003-01-10 | 2003-01-20 | 109, 180SS-10d | 30d |  |
| 113 | 1.7 | **Application Development** | 63d | 2002-09-09 | 2002-12-17 |  | 18d | 0d |
| 114 | 1.7.1 | **Development Planning** | 5d | 2002-09-09 | 2002-09-17 | 73 | 76d |  |
| 115 | 1.7.1.1 | Development module plan | 5d | 2002-09-09 | 2002-09-17 |  | 76d |  |
| 116 | 1.7.2 | **Initial Database** | 11d | 2002-10-03 | 2002-10-22 | 104 | 18d | 0d |
| 117 | 1.7.2.1 | Build / Develop/ Setup database | 5d | 2002-10-03 | 2002-10-11 |  | 18d | 0d |
| 118 | 1.7.2.2 | Test database | 5d | 2002-10-11 | 2002-10-21 | 117 | 18d | 0d |
| 119 | 1.7.2.3 | Review / signoff database | 1d | 2002-10-21 | 2002-10-22 | 118 | 18d |  |
| 120 | 1.7.3 | **Prototype** | 11d | 2002-10-22 | 2002-11-07 | 116 | 18d |  |
| 121 | 1.7.3.1 | Build prototype | 5d | 2002-10-22 | 2002-10-29 |  | 18d | 0d |
| 122 | 1.7.3.2 | Test prototype | 5d | 2002-10-29 | 2002-11-06 | 121 | 43d | 0d |
| 123 | 1.7.3.3 | Review / signoff Prototype | 1d | 2002-11-06 | 2002-11-07 | 122 | 43d |  |
| 124 | 1.7.4 | **Common Routines / Modules / Templates** | 16d | 2002-10-29 | 2002-11-22 | 116 | 18d |  |
| 125 | 1.7.4.1 | Build common routines / modules /templates | 10d | 2002-10-29 | 2002-11-14 | 121SS+5d | 18d | 0d |
| 126 | 1.7.4.2 | Develop unit test scripts | 5d | 2002-10-29 | 2002-11-06 | 125SS | 44d |  |
| 127 | 1.7.4.3 | Test common routines / modules / templates | 10d | 2002-11-06 | 2002-11-21 | 125SS+5d | 33d | 0d |
| 128 | 1.7.4.4 | Review and signoff | 1d | 2002-11-21 | 2002-11-22 | 127 | 33d |  |
| 129 | 1.7.5 | **Modules / Programs / Units** | 16d | 2002-11-06 | 2002-12-02 |  | 18d |  |
| 130 | 1.7.5.1 | Build modules / programs / units | 15d | 2002-11-06 | 2002-11-29 | 125SS+5d | 18d | 0d |
| 131 | 1.7.5.2 | Develop unit test scripts | 5d | 2002-11-06 | 2002-11-14 | 130SS | 39d |  |
| 132 | 1.7.5.3 | Test modules / programs / units | 10d | 2002-11-14 | 2002-11-29 | 130SS+5d | 28d | 0d |
| 133 | 1.7.5.4 | Review and signoff | 1d | 2002-11-29 | 2002-12-02 | 132 | 28d |  |

| ID | WBS | Task | Duration | Start | Finish | Predecessors | Total slack | Free slack |
| --- | --- | --- | --- | --- | --- | --- | --- | --- |
| 134 | 1.7.6 | **Application Integration** | 11d | 2002-11-29 | 2002-12-17 |  | 18d | 0d |
| 135 | 1.7.6.1 | Integrate modules / programs / units | 5d | 2002-11-29 | 2002-12-09 | 130 | 18d | 0d |
| 136 | 1.7.6.2 | Develop unit testing scripts | 5d | 2002-11-29 | 2002-12-09 | 135SS | 18d | 0d |
| 137 | 1.7.6.3 | Unit Testing | 5d | 2002-12-09 | 2002-12-16 | 135, 136 | 18d | 0d |
| 138 | 1.7.6.4 | Review and signoff | 1d | 2002-12-16 | 2002-12-17 | 137 | 18d |  |
| 139 | 1.8 | **Data Migration** | 21d | 2002-09-09 | 2002-10-11 |  | 93d |  |
| 140 | 1.8.1 | **Build** | 15d | 2002-09-09 | 2002-10-02 |  | 93d |  |
| 141 | 1.8.1.1 | Data migration design | 5d | 2002-09-09 | 2002-09-17 | 73 | 93d | 0d |
| 142 | 1.8.1.2 | Build data migration components | 5d | 2002-09-17 | 2002-09-25 | 141 | 93d | 0d |
| 143 | 1.8.1.3 | Perform Data migration | 5d | 2002-09-25 | 2002-10-02 | 142 | 93d | 0d |
| 144 | 1.8.2 | **Test** | 20d | 2002-09-09 | 2002-10-10 |  | 93d | 0d |
| 145 | 1.8.2.1 | Build testing routines | 5d | 2002-09-09 | 2002-09-17 | 141SS | 108d |  |
| 146 | 1.8.2.2 | Test Migration Results | 5d | 2002-10-02 | 2002-10-10 | 143 | 93d |  |
| 147 | 1.8.3 | Review and signoff | 1d | 2002-10-10 | 2002-10-11 | 144 | 93d |  |
| 148 | 1.9 | **System Documentation** | 6d | 2002-12-17 | 2002-12-26 |  | 45d |  |
| 149 | 1.9.1 | **Source Code** | 6d | 2002-12-17 | 2002-12-26 | 113SS | 45d |  |
| 150 | 1.9.1.1 | Compile source code documentation | 5d | 2002-12-17 | 2002-12-25 | 113SS, 134FF+5d | 45d | 0d |
| 151 | 1.9.1.2 | Review and signoff | 1d | 2002-12-25 | 2002-12-26 | 150 | 45d |  |
| 152 | 1.9.2 | **Operations Manual** | 6d | 2002-12-17 | 2002-12-26 | 113 | 45d |  |
| 153 | 1.9.2.1 | Develop Operations manual | 5d | 2002-12-17 | 2002-12-25 |  | 45d | 0d |
| 154 | 1.9.2.2 | Review and signoff | 1d | 2002-12-25 | 2002-12-26 | 153 | 45d |  |
| 155 | 1.9.3 | **User Manual** | 6d | 2002-12-17 | 2002-12-26 | 113 | 45d |  |
| 156 | 1.9.3.1 | Develop User Manual | 5d | 2002-12-17 | 2002-12-25 |  | 45d | 0d |
| 157 | 1.9.3.2 | Review and signoff | 1d | 2002-12-25 | 2002-12-26 | 156 | 45d |  |

| ID | WBS | Task | Duration | Start | Finish | Predecessors | Total slack | Free slack |
| --- | --- | --- | --- | --- | --- | --- | --- | --- |
| 158 | 1.10 | **Testing** | 89d | 2002-09-09 | 2003-01-28 | 73 | 18d | 0d |
| 159 | 1.10.1 | **Planning** | 16d | 2002-09-09 | 2002-10-03 |  | 65d | 47d |
| 160 | 1.10.1.1 | Build Test plan and startegy | 5d | 2002-09-09 | 2002-09-17 |  | 76d |  |
| 161 | 1.10.1.2 | Build test cases and scripts | 15d | 2002-09-09 | 2002-10-02 | 113SS | 65d | 0d |
| 162 | 1.10.1.3 | Review and signoff | 1d | 2002-10-02 | 2002-10-03 | 161 | 65d |  |
| 163 | 1.10.2 | **System Testing** | 5d | 2002-12-17 | 2002-12-25 | 113, 159 | 18d | 0d |
| 164 | 1.10.2.1 | Perform system testing | 5d | 2002-12-17 | 2002-12-25 |  | 18d |  |
| 165 | 1.10.2.2 | Verification and validation | 5d | 2002-12-17 | 2002-12-25 |  | 18d |  |
| 166 | 1.10.3 | **Iintegration testing** | 5d | 2002-12-25 | 2003-01-02 | 163 | 18d | 0d |
| 167 | 1.10.3.1 | Perform testing | 5d | 2002-12-25 | 2003-01-02 |  | 18d |  |
| 168 | 1.10.3.2 | Verification and validation | 5d | 2002-12-25 | 2003-01-02 |  | 18d |  |
| 169 | 1.10.4 | **Regression / Performance testing** | 5d | 2003-01-02 | 2003-01-09 | 166 | 18d | 0d |
| 170 | 1.10.4.1 | Perform testing | 5d | 2003-01-02 | 2003-01-09 |  | 18d |  |
| 171 | 1.10.4.2 | Verification and validation | 5d | 2003-01-02 | 2003-01-09 |  | 18d |  |
| 172 | 1.10.5 | **User Acceptance** | 11d | 2003-01-09 | 2003-01-28 | 169 | 18d |  |
| 173 | 1.10.5.1 | Perform final user acceptance | 10d | 2003-01-09 | 2003-01-24 |  | 18d | 0d |
| 174 | 1.10.5.2 | Perform final operational acceptance | 10d | 2003-01-09 | 2003-01-24 |  | 18d | 0d |
| 175 | 1.10.5.3 | Review & Signoff | 1d | 2003-01-24 | 2003-01-28 | 173, 174 | 18d |  |
| 176 | 1.11 | **Training** | 79d | 2002-09-09 | 2003-01-10 |  | 35d |  |
| 177 | 1.11.1 | Develop training program | 5d | 2002-09-09 | 2002-09-17 | 113SS | 109d |  |
| 178 | 1.11.2 | Conduct training | 5d | 2003-01-03 | 2003-01-10 | 179SS-10d | 35d |  |
| 179 | 1.12 | **Production Implementation** | 24d | 2003-01-20 | 2003-02-26 |  | 0d |  |
| 180 | 1.12.1 | **Implementation Readiness** | 1d | 2003-01-28 | 2003-01-29 | 158 | 18d | 0d |
| 181 | 1.12.1.1 | Review implementation readiness | 1d | 2003-01-28 | 2003-01-29 |  | 18d |  |
| 182 | 1.12.1.2 | Signoff | 1d | 2003-01-28 | 2003-01-29 |  | 18d |  |

| ID | WBS | Task | Duration | Start | Finish | Predecessors | Total slack |
| --- | --- | --- | --- | --- | --- | --- | --- |
| 183 | 1.12.2 | **Install system** | 24d | 2003-01-20 | 2003-02-26 |  | 0d |
| 184 | 1.12.2.1 | Install HW | 5d | 2003-01-20 | 2003-01-28 | 106 | 0d |
| 185 | 1.12.2.2 | Install System SW | 2d | 2003-01-28 | 2003-01-30 | 184 | 0d |
| 186 | 1.12.2.3 | Install applcation | 2d | 2003-01-30 | 2003-02-03 | 185 | 0d |
| 187 | 1.12.2.4 | Load data | 2d | 2003-02-03 | 2003-02-05 | 186 | 0d |
| 188 | 1.12.2.5 | Application Testing | 2d | 2003-02-05 | 2003-02-10 | 187 | 0d |
| 189 | 1.12.2.6 | Parallel Testing | 10d | 2003-02-10 | 2003-02-25 | 188 | 0d |
| 190 | 1.12.2.7 | System Launched | 1d | 2003-02-25 | 2003-02-26 | 189 | 0d |
| 191 | 1.13 | **CLOSE-DOWN** | 6d | 2003-02-26 | 2003-03-07 |  | 0d |
| 192 | 1.13.1 | Document project closedown report | 5d | 2003-02-26 | 2003-03-06 | 179 | 0d |
| 193 | 1.13.2 | Release resources | 5d | 2003-02-26 | 2003-03-06 | 179 | 1d |
| 194 | 1.13.3 | Perform project post-martem | 1d | 2003-03-06 | 2003-03-07 | 192 | 0d |
